# Planning_Project

Schedule from MS Project, 2014-09-08 to 2014-11-07, A marks actual dates.

## Calendars

- Standaard: Mon-Fri 08:00-12:00, 13:00-17:00; Sat-Sun off. Exceptions (off unless hours are given): 2014-10-20 to 2014-10-26 (Herfst vakantie).

## Resources

| Resource |
| --- |
| Marco Havermans |
| Pieter Hoek |
| Kevin Ly |

## Schedule

| ID | WBS | Task | Duration | Start | Finish | Predecessors | Complete | Remaining | Total slack | Free slack | Constraint |
| --- | --- | --- | --- | --- | --- | --- | --- | --- | --- | --- | --- |
| 1 | 1 | **Inception Phase** | 3.38d | 2014-09-08 13:20 A | 2014-09-18 10:00 |  | 57% | 1.46d | 5.04d | 1.21d |  |
| 2 | 1.1 | Interview voorbereiden | 3h | 2014-09-08 13:20 A | 2014-09-10 17:00 A |  | 100% |  |  |  | finish no earlier than 2014-09-10 17:00 |
| 3 | 1.2 | Intervies houden (2x Engels) | 2h | 2014-09-10 08:00 A | 2014-09-11 10:40 A | 2 | 100% |  |  |  |  |
| 4 | 1.3 | Gespreksverslagen terugkoppelen | 3h | 2014-09-12 08:40 | 2014-09-12 12:00 | 2, 3 |  |  | 5.67d |  | start no earlier than 2014-09-12 08:00 |
| 5 | 1.4 | Hernieuwde opdracht | 4h | 2014-09-12 08:00 A | 2014-09-15 17:00 A | 4 | 100% |  |  |  | finish no earlier than 2014-09-15 17:00 |
| 6 | 1.5 | Prototype van schermen | 3h | 2014-09-15 08:00 A | 2014-09-17 17:00 A | 5 | 100% |  |  |  | finish no earlier than 2014-09-17 17:00 |
| 7 | 1.6 | Offerte uitbregen | 4h | 2014-09-17 13:20 | 2014-09-18 09:00 | 5 |  |  | 4.17d |  | start no earlier than 2014-09-17 08:00 |
| 8 | 1.7 | Vergadering met agenda en notulen | 1h | 2014-09-18 08:40 | 2014-09-18 09:40 |  |  |  | 4.08d |  | start no earlier than 2014-09-18 08:00 |
| 9 | 1.8 | Plan van aanpak, inclusief risicoanalyse (Engels) | 3h | 2014-09-12 08:00 A | 2014-09-15 17:00 A | 5 | 100% |  |  |  | finish no earlier than 2014-09-15 17:00 |
| 10 | 1.9 | Globale planning voor het gehele project | 2h | 2014-09-15 13:20 A | 2014-09-15 15:40 A |  | 100% |  |  |  | start no earlier than 2014-09-15 08:00 |
| 11 | 1.10 | Functioneel ontwerp inclusief taakverdeling in MS-Project (Engels) | 1h | 2014-09-17 13:20 | 2014-09-17 14:20 |  |  |  | 4.04d | 0d | start no earlier than 2014-09-17 08:00 |
| 12 | 1.11 | Use-Case Diagrammen | 2h | 2014-09-17 14:20 | 2014-09-17 16:40 | 11 |  |  | 4.04d | 0d | start no earlier than 2014-09-17 08:00 |
| 13 | 1.12 | Use-case templates | 1h | 2014-09-17 16:40 | 2014-09-18 09:00 | 11, 12 |  |  | 4.04d | 0d | start no earlier than 2014-09-17 08:00 |
| 14 | 1.13 | Activiteitendiagrammen | 1h | 2014-09-18 09:00 | 2014-09-18 10:00 | 13 |  |  | 4.04d |  | start no earlier than 2014-09-18 08:00 |
| 15 | 2 | **Elaboration Phase** | 2.25d | 2014-09-22 13:20 | 2014-09-26 17:00 | 1 |  |  | 3.46d | 0.67d |  |
| 16 | 2.1 | Technisch Ontwerp inclusief taakverdeling in MS-Project (Engels) | 2h | 2014-09-22 13:20 | 2014-09-22 15:40 |  |  |  | 4.08d | 0d | start no earlier than 2014-09-22 08:00 |
| 17 | 2.2 | Modeldictionary | 2h | 2014-09-22 15:40 | 2014-09-24 13:40 | 16 |  |  | 4.08d | 0.12d | start no earlier than 2014-09-22 08:00 |
| 18 | 2.3 | Klassendiagram | 2h | 2014-09-24 14:40 | 2014-09-24 17:00 | 17 |  |  | 3.96d | 0d | finish no earlier than 2014-09-24 17:00 |
| 19 | 2.4 | Datadictionary | 3h | 2014-09-24 17:00 | 2014-09-25 11:40 | 18 |  |  | 3.96d | 0d | finish no earlier than 2014-09-24 17:00 |
| 20 | 2.5 | Sequentiediagrammen | 2h | 2014-09-25 11:40 | 2014-09-26 09:40 | 19 |  |  | 3.96d | 0d | finish no earlier than 2014-09-25 17:00 |
| 21 | 2.6 | Taakverdeling ontwikkelomgeving | 2h | 2014-09-26 09:40 | 2014-09-26 12:00 | 20 |  |  | 3.96d | 0.25d | start no earlier than 2014-09-25 08:00 |
| 22 | 2.7 | Hard- en software van de ingerichte ontwikkelomgeving | 2h | 2014-09-26 14:40 | 2014-09-26 17:00 | 21 |  |  | 3.71d |  | finish no earlier than 2014-09-26 17:00 |
| 23 | 3 | **Construction Phase** | 8.5d | 2014-10-01 14:40 | 2014-10-31 17:00 | 15 |  |  | 1.79d | 0.04d |  |
| 24 | 3.1 | Het genormaliseerde databaseontwerp | 2h | 2014-10-01 14:40 | 2014-10-01 17:00 |  |  |  | 2.79d | 0.12d | finish no earlier than 2014-10-01 17:00 |
| 25 | 3.2 | De database (gebouwd) | 3h | 2014-10-02 09:20 | 2014-10-02 17:00 | 24 |  |  | 2.67d | 0.12d | finish no earlier than 2014-10-02 17:00 |
| 26 | 3.3 | Werkende solution | 50h | 2014-10-03 09:40 | 2014-10-29 17:00 | 25 |  |  | 2.54d | 0.04d | finish no earlier than 2014-10-29 17:00 |
| 27 | 3.4 | Functioneel-technische acceptatietest maken | 2h | 2014-10-30 08:40 | 2014-10-30 11:00 | 26 |  |  | 2.5d | 0.71d | start no earlier than 2014-10-30 08:00 |
| 28 | 3.5 | Functioneel-technische acceptatietest uitvoeren | 3h | 2014-10-31 13:40 | 2014-10-31 17:00 | 27 |  |  | 1.79d |  | finish no earlier than 2014-10-31 17:00 |

| ID | WBS | Task | Duration | Start | Finish | Predecessors | Total slack | Constraint |
| --- | --- | --- | --- | --- | --- | --- | --- | --- |
| 29 | 4 | **Transition Phase** | 2.25d | 2014-11-03 13:20 | 2014-11-07 17:00 | 23 | 0d |  |
| 30 | 4.1 | Een volledig werken systeem. Gerapporteerde bugs zijn opgelost. | 3h | 2014-11-03 13:20 | 2014-11-03 16:40 | 23 | 1.88d | start no earlier than 2014-11-03 08:00 |
| 31 | 4.2 | Gebruikershandleiding (Engels) | 3h | 2014-11-05 13:40 | 2014-11-05 17:00 | 23 | 1.38d | finish no earlier than 2014-11-05 17:00 |
| 32 | 4.3 | Projectrapport ( = alle documentatie op volgorde; inclusief notulen) | 2h | 2014-11-05 14:40 | 2014-11-05 17:00 | 23 | 1.38d | finish no earlier than 2014-11-05 17:00 |
| 33 | 4.4 | Teamrapport ( = groeps- en individuele reflectie ) | 2h | 2014-11-05 14:40 | 2014-11-05 17:00 | 23 | 1.38d | finish no earlier than 2014-11-05 17:00 |
| 34 | 4.5 | Presentatie (in het engels) maken | 4h | 2014-11-07 12:00 | 2014-11-07 17:00 | 23 | 0d | finish no earlier than 2014-11-07 17:00 |
| 35 | 4.6 | Logboek Voortgangsbewaking en Samenwerking | 1h | 2014-11-03 13:20 | 2014-11-03 14:20 | 23 | 2.12d | start no earlier than 2014-11-03 08:00 |
